# Software Development

Schedule from MS Project, 2000-01-03 to 2000-05-05, costs in $.

## Calendars

- Standard: Mon-Fri 08:00-12:00, 13:00-17:00; Sat-Sun off.

## Resources

| Resource | Rate |
| --- | --- |
| Department Manager | 100 |
| Project Manager | 75 |
| Analyst | 50 |
| Developer | 50 |
| Tester | 50 |
| Trainer | 50 |
| Technical Comunicator | 50 |
| Deployment Specialist | 50 |

## Schedule

| ID | WBS | Task | Type | Duration | Start | Finish | Predecessors | Total slack | Resources | Work | Cost |
| --- | --- | --- | --- | --- | --- | --- | --- | --- | --- | --- | --- |
| 1 | 1 | **Software Devlelopment** |  | 89.5d | 2000-01-03 | 2000-05-05 |  | 0d |  | 1392h | 71,900 |
| 2 | 1.1 | **Design** |  | 14.5d | 2000-01-03 | 2000-01-21 |  | 0d |  | 120h | 7,500 |
| 3 | 1.1.1 | Review preliminary software specifications |  | 2d | 2000-01-03 | 2000-01-04 |  | 0d | Analyst | 16h | 800 |
| 4 | 1.1.2 | Develop functional specifications |  | 5d | 2000-01-05 | 2000-01-11 | 3 | 0d | Analyst | 40h | 2,000 |
| 5 | 1.1.3 | Develop prototype based on functional specifications |  | 4d | 2000-01-12 | 2000-01-17 | 4 | 0d | Analyst | 32h | 1,600 |
| 6 | 1.1.4 | Review functional specifications |  | 2d | 2000-01-18 | 2000-01-19 | 5 | 0d | Department Manager | 16h | 1,600 |
| 7 | 1.1.5 | Incorporate feedback into functional specifications |  | 1d | 2000-01-20 | 2000-01-20 | 6 | 0d | Department Manager | 8h | 800 |
| 8 | 1.1.6 | Obtain approval to proceed |  | 4h | 2000-01-21 | 2000-01-21 | 7 | 0d | Department Manager; Project Manager | 8h | 700 |
| 9 | 1.1.7 | Design complete | milestone | 0d | 2000-01-21 | 2000-01-21 | 8 | 0d |  |  |  |
| 10 | 1.2 | **Development** |  | 33d | 2000-01-21 | 2000-03-08 |  | 0d |  | 264h | 13,200 |
| 11 | 1.2.1 | Review functional specifications |  | 1d | 2000-01-21 | 2000-01-24 | 9 | 0d | Developer | 8h | 400 |
| 12 | 1.2.2 | Identify modular/tiered design parameters |  | 1d | 2000-01-24 | 2000-01-25 | 11 | 0d | Developer | 8h | 400 |
| 13 | 1.2.3 | Assign development staff |  | 1d | 2000-01-25 | 2000-01-26 | 12 | 0d | Developer | 8h | 400 |
| 14 | 1.2.4 | Develop code |  | 15d | 2000-01-26 | 2000-02-16 | 13 | 0d | Developer | 120h | 6,000 |
| 15 | 1.2.5 | Developer testing (primary debugging) |  | 15d | 2000-02-16 | 2000-03-08 | 14 | 0d | Developer | 120h | 6,000 |
| 16 | 1.2.6 | Development complete | milestone | 0d | 2000-03-08 | 2000-03-08 | 15 | 0d |  |  |  |
| 17 | 1.3 | **Testing** |  | 4d | 2000-01-21 | 2000-01-27 |  | 29d |  | 64h | 3,200 |
| 18 | 1.3.1 | Develop unit test plans using product specifications |  | 4d | 2000-01-21 | 2000-01-27 | 9 | 29d | Tester | 32h | 1,600 |
| 19 | 1.3.2 | Develop integration test plans using product specifications |  | 4d | 2000-01-21 | 2000-01-27 | 9 | 71d | Tester | 32h | 1,600 |
| 20 | 1.4 | **Unit Testing** |  | 15d | 2000-03-08 | 2000-03-29 |  | 0d |  | 120h | 6,000 |
| 21 | 1.4.1 | Review modular code |  | 5d | 2000-03-08 | 2000-03-15 | 18, 16 | 0d | Tester | 40h | 2,000 |
| 22 | 1.4.2 | Test component modules to product specifications |  | 2d | 2000-03-15 | 2000-03-17 | 16, 21 | 0d | Tester | 16h | 800 |
| 23 | 1.4.3 | Identify anomalies to product specifications |  | 3d | 2000-03-17 | 2000-03-22 | 22 | 0d | Tester | 24h | 1,200 |
| 24 | 1.4.4 | Modify code |  | 3d | 2000-03-22 | 2000-03-27 | 23 | 0d | Tester | 24h | 1,200 |
| 25 | 1.4.5 | Re-test modified code |  | 2d | 2000-03-27 | 2000-03-29 | 24 | 0d | Tester | 16h | 800 |
| 26 | 1.4.6 | Unit testing complete | milestone | 0d | 2000-03-29 | 2000-03-29 | 25 | 0d |  |  |  |

| ID | WBS | Task | Type | Duration | Start | Finish | Predecessors | Total slack | Free slack | Resources | Work | Cost |
| --- | --- | --- | --- | --- | --- | --- | --- | --- | --- | --- | --- | --- |
| 27 | 1.5 | **Integration Testing** |  | 12d | 2000-03-29 | 2000-04-14 |  | 0d |  |  | 96h | 4,800 |
| 28 | 1.5.1 | Test module integration |  | 5d | 2000-03-29 | 2000-04-05 | 26 | 0d |  | Tester | 40h | 2,000 |
| 29 | 1.5.2 | Identify anomalies to specifications |  | 2d | 2000-04-05 | 2000-04-07 | 28 | 0d |  | Tester | 16h | 800 |
| 30 | 1.5.3 | Modify code |  | 3d | 2000-04-07 | 2000-04-12 | 29 | 0d |  | Tester | 24h | 1,200 |
| 31 | 1.5.4 | Re-test modified code |  | 2d | 2000-04-12 | 2000-04-14 | 30 | 0d |  | Tester | 16h | 800 |
| 32 | 1.5.5 | Integration testing complete | milestone | 0d | 2000-04-14 | 2000-04-14 | 31 | 0d |  |  |  |  |
| 33 | 1.6 | **Training** |  | 57d | 2000-01-21 | 2000-04-11 |  | 3d |  |  | 256h | 12,800 |
| 34 | 1.6.1 | Develop training specifications for end users |  | 3d | 2000-01-21 | 2000-01-26 | 9 | 33d | 30d | Trainer | 24h | 1,200 |
| 35 | 1.6.2 | Develop training specifications for helpdesk support staff |  | 3d | 2000-01-21 | 2000-01-26 | 9 | 33d | 30d | Trainer | 24h | 1,200 |
| 36 | 1.6.3 | Identify training delivery methodology (computer based training, classroom, etc.) |  | 2d | 2000-01-21 | 2000-01-25 | 9 | 34d | 31d | Trainer | 16h | 800 |
| 37 | 1.6.4 | Develop training materials |  | 3w | 2000-03-08 | 2000-03-29 | 34, 16, 35, 36 | 3d | 0d | Trainer | 120h | 6,000 |
| 38 | 1.6.5 | Conduct training usability study |  | 4d | 2000-03-29 | 2000-04-04 | 37 | 3d | 0d | Trainer | 32h | 1,600 |
| 39 | 1.6.6 | Finalize training materials |  | 3d | 2000-04-04 | 2000-04-07 | 38 | 3d | 0d | Trainer | 24h | 1,200 |
| 40 | 1.6.7 | Develop training delivery mechanism |  | 2d | 2000-04-07 | 2000-04-11 | 39 | 3d | 0d | Trainer | 16h | 800 |
| 41 | 1.6.8 | Training materials complete | milestone | 0d | 2000-04-11 | 2000-04-11 | 40 | 3d |  |  |  |  |
| 42 | 1.7 | **Documentation** |  | 21d | 2000-01-21 | 2000-02-21 |  | 39d |  |  | 336h | 16,800 |
| 43 | 1.7.1 | Develop Help specification |  | 1d | 2000-01-21 | 2000-01-24 | 9 | 39d | 0d | Technical Comunicator | 8h | 400 |
| 44 | 1.7.2 | Develop Help system |  | 3w | 2000-01-24 | 2000-02-14 | 43 | 39d | 0d | Technical Comunicator | 120h | 6,000 |
| 45 | 1.7.3 | Review Help documentation |  | 3d | 2000-02-14 | 2000-02-17 | 44 | 39d | 0d | Technical Comunicator | 24h | 1,200 |
| 46 | 1.7.4 | Incorporate Help documentation feedback |  | 2d | 2000-02-17 | 2000-02-21 | 45 | 39d | 0d | Technical Comunicator | 16h | 800 |
| 47 | 1.7.5 | Develop user manuals specifications |  | 2d | 2000-01-21 | 2000-01-25 | 9 | 39d | 0d | Technical Comunicator | 16h | 800 |
| 48 | 1.7.6 | Develop user manuals |  | 3w | 2000-01-25 | 2000-02-15 | 47 | 39d | 0d | Technical Comunicator | 120h | 6,000 |
| 49 | 1.7.7 | Review all user documentation |  | 2d | 2000-02-15 | 2000-02-17 | 48 | 39d | 0d | Technical Comunicator | 16h | 800 |
| 50 | 1.7.8 | Incorporate user documentation feedback |  | 2d | 2000-02-17 | 2000-02-21 | 49 | 39d | 0d | Technical Comunicator | 16h | 800 |
| 51 | 1.7.9 | Documentation complete | milestone | 0d | 2000-02-21 | 2000-02-21 | 50, 46 | 39d |  |  |  |  |

| ID | WBS | Task | Type | Duration | Start | Finish | Predecessors | Total slack | Free slack | Resources | Work | Cost |
| --- | --- | --- | --- | --- | --- | --- | --- | --- | --- | --- | --- | --- |
| 52 | 1.8 | **Pilot** |  | 81.5d | 2000-01-03 | 2000-04-25 |  | 0d |  |  | 72h | 3,800 |
| 53 | 1.8.1 | Identify test group |  | 1d | 2000-01-03 | 2000-01-03 |  | 72.5d | 0d | Project Manager | 8h | 600 |
| 54 | 1.8.2 | Develop software delivery mechanism |  | 1d | 2000-01-04 | 2000-01-04 | 53 | 72.5d |  | Developer | 8h | 400 |
| 55 | 1.8.3 | Install/deploy software |  | 1d | 2000-04-14 | 2000-04-17 | 32, 54, 51, 41 | 0d |  | Deployment Specialist | 8h | 400 |
| 56 | 1.8.4 | Obtain user feedback |  | 1w | 2000-04-17 | 2000-04-24 | 55 | 0d |  | Deployment Specialist | 40h | 2,000 |
| 57 | 1.8.5 | Evaluate testing information |  | 1d | 2000-04-24 | 2000-04-25 | 56 | 0d |  | Deployment Specialist | 8h | 400 |
| 58 | 1.8.6 | Pilot complete | milestone | 0d | 2000-04-25 | 2000-04-25 | 57 | 0d |  |  |  |  |
| 59 | 1.9 | **Deployment** |  | 5d | 2000-04-25 | 2000-05-02 |  | 0d |  |  | 40h | 2,000 |
| 60 | 1.9.1 | Determine final deployment strategy |  | 1d | 2000-04-25 | 2000-04-26 | 58 | 0d |  | Deployment Specialist | 8h | 400 |
| 61 | 1.9.2 | Develop deployment methodology |  | 1d | 2000-04-26 | 2000-04-27 | 60 | 0d |  | Deployment Specialist | 8h | 400 |
| 62 | 1.9.3 | Secure deployment resources |  | 1d | 2000-04-27 | 2000-04-28 | 61 | 0d |  | Deployment Specialist | 8h | 400 |
| 63 | 1.9.4 | Train support staff |  | 1d | 2000-04-28 | 2000-05-01 | 62 | 0d |  | Deployment Specialist | 8h | 400 |
| 64 | 1.9.5 | Deploy software |  | 1d | 2000-05-01 | 2000-05-02 | 63 | 0d |  | Deployment Specialist | 8h | 400 |
| 65 | 1.9.6 | Deployment complete | milestone | 0d | 2000-05-02 | 2000-05-02 | 64 | 0d |  |  |  |  |
| 66 | 1.10 | **Post Implementation Review** |  | 3d | 2000-05-02 | 2000-05-05 |  | 0d |  |  | 24h | 1,800 |
| 67 | 1.10.1 | Document lessons learned |  | 1d | 2000-05-02 | 2000-05-03 | 65 | 0d |  | Project Manager | 8h | 600 |
| 68 | 1.10.2 | Distribute to team members |  | 1d | 2000-05-03 | 2000-05-04 | 67 | 0d |  | Project Manager | 8h | 600 |
| 69 | 1.10.3 | Create software maintenance team |  | 1d | 2000-05-04 | 2000-05-05 | 68 | 0d |  | Project Manager | 8h | 600 |
| 70 | 1.10.4 | Post implementation review complete | milestone | 0d | 2000-05-05 | 2000-05-05 | 69 | 0d |  | Project Manager |  |  |
